# MH Meli Group---

Schedule from MS Project, 2023-09-12 to 2024-05-18, status date 2023-12-25, A marks actual dates.
PAYA

## Calendars

- Standard: Mon-Sun 08:00-12:00, 13:00-17:00.

## Schedule

| ID | WBS | Task | Type | Duration | Start | Finish | Predecessors | Complete | Remaining | Baseline start | Baseline finish | Baseline duration | Total slack | Variance | Start. | Finish. | Text2 |
| --- | --- | --- | --- | --- | --- | --- | --- | --- | --- | --- | --- | --- | --- | --- | --- | --- | --- |
| 1 | 1 | **Time Schedule For tolo...14020624** |  | 250d | 2023-09-12 A | 2024-05-18 |  | 51% | 121.97d | 2023-09-12 | 2024-05-18 | 250d |  | -49.37 | 1402/6/21 | 1403/2/29 |  |
| 2 | 1.1 | Contract Siging | milestone | 0d | 2023-09-12 A | 2023-09-12 A |  | 100% |  | 2023-09-12 | 2023-09-12 | 0d |  |  | 1402/6/21 | 1402/6/21 |  |
| 3 | 1.2 | Kick of Meeting | milestone | 0d | 2023-09-12 A | 2023-09-12 A | 2 | 100% |  | 2023-09-12 | 2023-09-12 | 0d |  |  | 1402/6/21 | 1402/6/21 |  |
| 4 | 1.3 | Advanced payment | milestone | 0d | 2023-09-12 A | 2023-09-12 A | 3, 2 | 100% |  | 2023-09-12 | 2023-09-12 | 0d |  |  | 1402/6/21 | 1402/6/21 |  |
| 5 | 1.4 | **Start project** |  | 250d | 2023-09-12 A | 2024-05-18 |  | 51% | 121.97d | 2023-09-12 | 2024-05-18 | 250d | 0d | -49.37 | 1402/6/21 | 1403/2/29 |  |
| 6 | 1.4.1 | **Engineering** |  | 128d | 2023-09-12 A | 2024-01-17 |  | 69% | 39.25d | 2023-09-12 | 2024-01-17 | 128d | 122d | -86.75 | 1402/6/21 | 1402/10/27 |  |
| 7 | 1.4.1.1 | **Main Burner A** |  | 7d | 2023-09-12 A | 2023-09-18 A |  | 100% |  | 2023-09-12 | 2023-09-18 | 7d |  | -100 | 1402/6/21 | 1402/6/27 | Main Burner A |
| 8 | 1.4.1.1.1 | FC Drawings | milestone | 0d | 2023-09-12 A | 2023-09-12 A | 4 | 100% |  | 2023-09-12 | 2023-09-12 | 0d |  | -100 | 1402/6/21 | 1402/6/21 | Main Burner A |
| 9 | 1.4.1.1.2 | MTO |  | 1d | 2023-09-12 A | 2023-09-12 A | 8 | 100% |  | 2023-09-12 | 2023-09-12 | 1d |  | -100 | 1402/6/21 | 1402/6/21 | Main Burner A |
| 10 | 1.4.1.1.3 | Shop Drawing |  | 6d | 2023-09-13 A | 2023-09-18 A | 9 | 100% |  | 2023-09-13 | 2023-09-18 | 6d |  | -100 | 1402/6/22 | 1402/6/27 | Main Burner A |
| 11 | 1.4.1.2 | **Main Burner B** |  | 13d | 2023-09-12 A | 2023-09-24 A |  | 100% |  | 2023-09-12 | 2023-09-24 | 13d |  | -100 | 1402/6/21 | 1402/7/2 | Main Burner B |
| 12 | 1.4.1.2.1 | FC Drawings | milestone | 0d | 2023-09-12 A | 2023-09-12 A | 8 | 100% |  | 2023-09-12 | 2023-09-12 | 0d |  | -100 | 1402/6/21 | 1402/6/21 | Main Burner B |
| 13 | 1.4.1.2.2 | MTO |  | 1d | 2023-09-13 A | 2023-09-13 A | 9, 12 | 100% |  | 2023-09-13 | 2023-09-13 | 1d |  | -100 | 1402/6/22 | 1402/6/22 | Main Burner B |
| 14 | 1.4.1.2.3 | Shop Drawing |  | 6d | 2023-09-19 A | 2023-09-24 A | 10 | 100% |  | 2023-09-19 | 2023-09-24 | 6d |  | -100 | 1402/6/28 | 1402/7/2 | Main Burner B |
| 15 | 1.4.1.3 | **Auxiliary Burner** |  | 16d | 2023-09-12 A | 2023-09-27 A |  | 100% |  | 2023-09-12 | 2023-09-27 | 16d |  | -100 | 1402/6/21 | 1402/7/5 | Auxiliary Burner |
| 16 | 1.4.1.3.1 | FC Drawings | milestone | 0d | 2023-09-12 A | 2023-09-12 A | 12 | 100% |  | 2023-09-12 | 2023-09-12 | 0d |  | -100 | 1402/6/21 | 1402/6/21 | Auxiliary Burner |
| 17 | 1.4.1.3.2 | MTO |  | 3d | 2023-09-14 A | 2023-09-16 A | 13, 16 | 100% |  | 2023-09-14 | 2023-09-16 | 3d |  | -100 | 1402/6/23 | 1402/6/25 | Auxiliary Burner |
| 18 | 1.4.1.3.3 | Shop Drawing |  | 3d | 2023-09-25 A | 2023-09-27 A | 14 | 100% |  | 2023-09-25 | 2023-09-27 | 3d |  | -100 | 1402/7/3 | 1402/7/5 | Auxiliary Burner |
| 19 | 1.4.1.4 | **Furnace Upper Burden Feeder** |  | 101d | 2023-09-12 A | 2023-12-21 A |  | 100% |  | 2023-09-12 | 2023-12-21 | 101d |  | -100 | 1402/6/21 | 1402/9/30 | Furnace Upper Burden Feeder |
| 20 | 1.4.1.4.1 | FC Drawings | milestone | 0d | 2023-09-12 A | 2023-09-12 A | 16 | 100% |  | 2023-09-12 | 2023-09-12 | 0d |  | -100 | 1402/6/21 | 1402/6/21 | Furnace Upper Burden Feeder |
| 21 | 1.4.1.4.2 | MTO |  | 1d | 2023-09-12 A | 2023-09-12 A | 20 | 100% |  | 2023-09-12 | 2023-09-12 | 1d |  | -100 | 1402/6/21 | 1402/6/21 | Furnace Upper Burden Feeder |
| 22 | 1.4.1.4.3 | Shop Drawing |  | 10d | 2023-12-12 A | 2023-12-21 A | 21FS+90d | 100% |  | 2023-12-12 | 2023-12-21 | 10d |  | -100 | 1402/9/21 | 1402/9/30 | Furnace Upper Burden Feeder |
| 23 | 1.4.1.5 | **Furnace Middle Burden Feeder** |  | 104d | 2023-09-12 A | 2023-12-24 A |  | 100% |  | 2023-09-12 | 2023-12-24 | 104d |  | -100 | 1402/6/21 | 1402/10/3 | Furnace Middle Burden Feeder |
| 24 | 1.4.1.5.1 | FC Drawings | milestone | 0d | 2023-09-12 A | 2023-09-12 A | 20 | 100% |  | 2023-09-12 | 2023-09-12 | 0d |  | -100 | 1402/6/21 | 1402/6/21 | Furnace Middle Burden Feeder |
| 25 | 1.4.1.5.2 | MTO |  | 1d | 2023-09-13 A | 2023-09-13 A | 24, 21 | 100% |  | 2023-09-13 | 2023-09-13 | 1d |  | -100 | 1402/6/22 | 1402/6/22 | Furnace Middle Burden Feeder |
| 26 | 1.4.1.5.3 | Shop Drawing |  | 3d | 2023-12-22 A | 2023-12-24 A | 22 | 100% |  | 2023-12-22 | 2023-12-24 | 3d |  | -100 | 1402/10/1 | 1402/10/3 | Furnace Middle Burden Feeder |

| ID | WBS | Task | Type | Duration | Start | Finish | Predecessors | Complete | Remaining | Baseline start | Baseline finish | Baseline duration | Total slack | Free slack | Variance | Text2 | Start. | Finish. |
| --- | --- | --- | --- | --- | --- | --- | --- | --- | --- | --- | --- | --- | --- | --- | --- | --- | --- | --- |
| 27 | 1.4.1.6 | **Furnace Lower Burden Feeder** |  | 107d | 2023-09-12 A | 2023-12-27 |  | 67% | 35.67d | 2023-09-12 | 2023-12-27 | 107d | 53d |  | -33 | Furnace Lower Burden Feeder | 1402/6/21 | 1402/10/6 |
| 28 | 1.4.1.6.1 | FC Drawings | milestone | 0d | 2023-09-12 A | 2023-09-12 A | 24 | 100% |  | 2023-09-12 | 2023-09-12 | 0d |  |  |  | Furnace Lower Burden Feeder | 1402/6/21 | 1402/6/21 |
| 29 | 1.4.1.6.2 | MTO |  | 3d | 2023-09-14 A | 2023-09-16 A | 25, 28 | 100% |  | 2023-09-14 | 2023-09-16 | 3d |  |  |  | Furnace Lower Burden Feeder | 1402/6/23 | 1402/6/25 |
| 30 | 1.4.1.6.3 | Shop Drawing |  | 3d | 2023-12-25 A | 2023-12-27 | 26 | 33% | 2d | 2023-12-25 | 2023-12-27 | 3d | 53d | 0d | -33 | Furnace Lower Burden Feeder | 1402/10/4 | 1402/10/6 |
| 31 | 1.4.1.7 | **Cooler middle Burden Feeder** |  | 113d | 2023-09-12 A | 2024-01-02 |  | 14% | 96.86d | 2023-09-12 | 2024-01-02 | 113d | 53d |  | -16.67 | Cooler middle Burden Feeder | 1402/6/21 | 1402/10/12 |
| 32 | 1.4.1.7.1 | FC Drawings | milestone | 0d | 2023-09-12 A | 2023-09-12 A | 28 | 100% |  | 2023-09-12 | 2023-09-12 | 0d |  |  | -100 | Cooler middle Burden Feeder | 1402/6/21 | 1402/6/21 |
| 33 | 1.4.1.7.2 | MTO |  | 1d | 2023-09-17 A | 2023-09-17 A | 32, 29, 17 | 100% |  | 2023-09-17 | 2023-09-17 | 1d |  |  | -100 | Cooler middle Burden Feeder | 1402/6/26 | 1402/6/26 |
| 34 | 1.4.1.7.3 | Shop Drawing |  | 6d | 2023-12-28 | 2024-01-02 | 30, 18 |  |  | 2023-12-28 | 2024-01-02 | 6d | 53d | 0d |  | Cooler middle Burden Feeder | 1402/10/7 | 1402/10/12 |
| 35 | 1.4.1.8 | **Cooler Lower Burden Feeder** |  | 116d | 2023-09-12 A | 2024-01-05 |  | 25% | 87d | 2023-09-12 | 2024-01-05 | 116d | 53d |  |  | Cooler Lower Burden Feeder | 1402/6/21 | 1402/10/15 |
| 36 | 1.4.1.8.1 | FC Drawings | milestone | 0d | 2023-09-12 A | 2023-09-12 A | 32 | 100% |  | 2023-09-12 | 2023-09-12 | 0d |  |  |  | Cooler Lower Burden Feeder | 1402/6/21 | 1402/6/21 |
| 37 | 1.4.1.8.2 | MTO |  | 1d | 2023-09-18 A | 2023-09-18 A | 33, 36 | 100% |  | 2023-09-18 | 2023-09-18 | 1d |  |  |  | Cooler Lower Burden Feeder | 1402/6/27 | 1402/6/27 |
| 38 | 1.4.1.8.3 | Shop Drawing |  | 3d | 2024-01-03 | 2024-01-05 | 34 |  |  | 2024-01-03 | 2024-01-05 | 3d | 53d | 0d |  | Cooler Lower Burden Feeder | 1402/10/13 | 1402/10/15 |
| 39 | 1.4.1.9 | **FPD** |  | 119d | 2023-09-12 A | 2024-01-08 |  | 50% | 59.5d | 2023-09-12 | 2024-01-08 | 119d | 56d |  | -19.51 | FPD | 1402/6/21 | 1402/10/18 |
| 40 | 1.4.1.9.1 | FC Drawings | milestone | 0d | 2023-09-12 A | 2023-09-12 A | 36 | 100% |  | 2023-09-12 | 2023-09-12 | 0d |  |  | -100 | FPD | 1402/6/21 | 1402/6/21 |
| 41 | 1.4.1.9.2 | MTO |  | 3d | 2023-09-19 A | 2023-09-21 A | 37, 40 | 100% |  | 2023-09-19 | 2023-09-21 | 3d |  |  | -100 | FPD | 1402/6/28 | 1402/6/30 |
| 42 | 1.4.1.9.3 | Shop Drawing |  | 3d | 2024-01-06 | 2024-01-08 | 38 |  |  | 2024-01-06 | 2024-01-08 | 3d | 56d | 0d |  | FPD | 1402/10/16 | 1402/10/18 |
| 43 | 1.4.1.10 | **Lower & Upper Slide Gate** |  | 16d | 2023-09-12 A | 2023-09-27 A |  | 100% |  | 2023-09-12 | 2023-09-27 | 16d |  |  | -100 | Lower & Upper Slide Gate | 1402/6/21 | 1402/7/5 |
| 44 | 1.4.1.10.1 | FC Drawings | milestone | 0d | 2023-09-12 A | 2023-09-12 A | 40 | 100% |  | 2023-09-12 | 2023-09-12 | 0d |  |  | -100 | Lower & Upper Slide Gate | 1402/6/21 | 1402/6/21 |
| 45 | 1.4.1.10.2 | MTO |  | 3d | 2023-09-22 A | 2023-09-24 A | 41, 44 | 100% |  | 2023-09-22 | 2023-09-24 | 3d |  |  | -100 | Lower & Upper Slide Gate | 1402/6/31 | 1402/7/2 |
| 46 | 1.4.1.10.3 | Shop Drawing |  | 3d | 2023-09-25 A | 2023-09-27 A | 10, 45 | 100% |  | 2023-09-25 | 2023-09-27 | 3d |  |  | -100 | Lower & Upper Slide Gate | 1402/7/3 | 1402/7/5 |
| 47 | 1.4.1.11 | **Furnace Thermowell** |  | 122d | 2023-09-12 A | 2024-01-11 |  | 25% | 91.5d | 2023-09-12 | 2024-01-11 | 122d | 122d |  | -33.33 | Furnace Thermowell | 1402/6/21 | 1402/10/21 |
| 48 | 1.4.1.11.1 | FC Drawings | milestone | 0d | 2023-09-12 A | 2023-09-12 A | 44 | 100% |  | 2023-09-12 | 2023-09-12 | 0d |  |  | -100 | Furnace Thermowell | 1402/6/21 | 1402/6/21 |
| 49 | 1.4.1.11.2 | MTO |  | 1d | 2023-09-13 A | 2023-09-13 A | 48, 21, 9 | 100% |  | 2023-09-13 | 2023-09-13 | 1d |  |  | -100 | Furnace Thermowell | 1402/6/22 | 1402/6/22 |
| 50 | 1.4.1.11.3 | Shop Drawing |  | 3d | 2024-01-09 | 2024-01-11 | 10, 42 |  |  | 2024-01-09 | 2024-01-11 | 3d | 122d | 0d |  | Furnace Thermowell | 1402/10/19 | 1402/10/21 |

| ID | WBS | Task | Type | Duration | Start | Finish | Predecessors | Complete | Remaining | Baseline start | Baseline finish | Baseline duration | Total slack | Free slack | Text2 | Start. | Finish. | Variance |
| --- | --- | --- | --- | --- | --- | --- | --- | --- | --- | --- | --- | --- | --- | --- | --- | --- | --- | --- |
| 51 | 1.4.1.12 | **Cooler Thermowell** |  | 128d | 2023-09-12 A | 2024-01-17 |  | 14% | 109.71d | 2023-09-12 | 2024-01-17 | 128d | 122d |  | Cooler Thermowell | 1402/6/21 | 1402/10/27 |  |
| 52 | 1.4.1.12.1 | FC Drawings | milestone | 0d | 2023-09-12 A | 2023-09-12 A | 48 | 100% |  | 2023-09-12 | 2023-09-12 | 0d |  |  | Cooler Thermowell | 1402/6/21 | 1402/6/21 |  |
| 53 | 1.4.1.12.2 | MTO |  | 1d | 2023-09-17 A | 2023-09-17 A | 29, 52, 17 | 100% |  | 2023-09-17 | 2023-09-17 | 1d |  |  | Cooler Thermowell | 1402/6/26 | 1402/6/26 |  |
| 54 | 1.4.1.12.3 | Shop Drawing |  | 6d | 2024-01-12 | 2024-01-17 | 30, 18, 50 |  |  | 2024-01-12 | 2024-01-17 | 6d | 122d |  | Cooler Thermowell | 1402/10/22 | 1402/10/27 |  |
| 55 | 1.4.2 | **Procurement** |  | 193d | 2023-09-12 A | 2024-03-22 |  | 62% | 72.63d | 2023-09-12 | 2024-03-22 | 193d | 57d |  |  | 1402/6/21 | 1403/1/3 | -71.45 |
| 56 | 1.4.2.1 | **Main Burner A** |  | 86d | 2023-09-13 A | 2023-12-07 A |  | 100% |  | 2023-09-13 | 2023-12-07 | 86d |  |  | Main Burner A | 1402/6/22 | 1402/9/16 | -100 |
| 57 | 1.4.2.1.1 | Bulk Material |  | 35d | 2023-09-13 A | 2023-10-17 A | 9 | 100% |  | 2023-09-13 | 2023-10-17 | 35d |  |  | Main Burner A | 1402/6/22 | 1402/7/25 | -100 |
| 58 | 1.4.2.1.2 | Other (Nut & Bolt - Paint) |  | 6d | 2023-12-02 A | 2023-12-07 A | 57, 98SS-3d | 100% |  | 2023-12-02 | 2023-12-07 | 6d |  |  | Main Burner A | 1402/9/11 | 1402/9/16 | -100 |
| 59 | 1.4.2.2 | **Main Burner B** |  | 51d | 2023-10-18 A | 2023-12-07 A |  | 100% |  | 2023-10-18 | 2023-12-07 | 51d |  |  | Main Burner B | 1402/7/26 | 1402/9/16 | -100 |
| 60 | 1.4.2.2.1 | Bulk Material |  | 6d | 2023-10-18 A | 2023-10-23 A | 57, 13 | 100% |  | 2023-10-18 | 2023-10-23 | 6d |  |  | Main Burner B | 1402/7/26 | 1402/8/1 | -100 |
| 61 | 1.4.2.2.2 | Other (Nut & Bolt - Paint) |  | 6d | 2023-12-02 A | 2023-12-07 A | 58SS, 13 | 100% |  | 2023-12-02 | 2023-12-07 | 6d |  |  | Main Burner B | 1402/9/11 | 1402/9/16 | -100 |
| 62 | 1.4.2.3 | **Auxiliary Burner** |  | 71d | 2023-10-24 A | 2024-01-02 |  | 50% | 35.5d | 2023-10-24 | 2024-01-02 | 71d | 137d |  | Auxiliary Burner | 1402/8/2 | 1402/10/12 | -74.07 |
| 63 | 1.4.2.3.1 | Bulk Material |  | 6d | 2023-10-24 A | 2023-10-29 A | 60, 17 | 100% |  | 2023-10-24 | 2023-10-29 | 6d |  |  | Auxiliary Burner | 1402/8/2 | 1402/8/7 | -100 |
| 64 | 1.4.2.3.2 | Other (Nut & Bolt - Paint) |  | 6d | 2023-12-28 | 2024-01-02 | 61, 17, 112SS-3d |  |  | 2023-12-28 | 2024-01-02 | 6d | 137d |  | Auxiliary Burner | 1402/10/7 | 1402/10/12 |  |
| 65 | 1.4.2.4 | **Furnace Upper Burden Feeder** |  | 156d | 2023-09-13 A | 2024-02-15 |  | 67% | 52d | 2023-09-13 | 2024-02-15 | 156d | 93d |  | Furnace Upper Burden Feeder | 1402/6/22 | 1402/11/26 | -51.77 |
| 66 | 1.4.2.4.1 | Bulk Material |  | 150d | 2023-09-13 A | 2024-02-09 | 21 | 69% | 46d | 2023-09-13 | 2024-02-09 | 150d | 4d | 0d | Furnace Upper Burden Feeder | 1402/6/22 | 1402/11/20 | -69 |
| 67 | 1.4.2.4.2 | Other (Nut & Bolt - Paint) |  | 6d | 2024-02-10 | 2024-02-15 | 21, 66 |  |  | 2024-02-10 | 2024-02-15 | 6d | 93d |  | Furnace Upper Burden Feeder | 1402/11/21 | 1402/11/26 |  |
| 68 | 1.4.2.5 | **Furnace Middle Burden Feeder** |  | 126d | 2023-09-14 A | 2024-01-17 |  | 82% | 23d | 2023-09-14 | 2024-01-17 | 126d | 111d |  | Furnace Middle Burden Feeder | 1402/6/23 | 1402/10/27 | -64.29 |
| 69 | 1.4.2.5.1 | Bulk Material |  | 120d | 2023-09-14 A | 2024-01-11 | 25 | 86% | 17d | 2023-09-14 | 2024-01-11 | 120d | 29d | 0d | Furnace Middle Burden Feeder | 1402/6/23 | 1402/10/21 | -86 |
| 70 | 1.4.2.5.2 | Other (Nut & Bolt - Paint) |  | 6d | 2024-01-12 | 2024-01-17 | 69 |  |  | 2024-01-12 | 2024-01-17 | 6d | 111d | 27d | Furnace Middle Burden Feeder | 1402/10/22 | 1402/10/27 |  |
| 71 | 1.4.2.6 | **Furnace Lower Burden Feeder** |  | 12d | 2024-01-12 | 2024-01-23 |  |  |  | 2024-01-12 | 2024-01-23 | 12d | 29d |  | Furnace Lower Burden Feeder | 1402/10/22 | 1402/11/3 |  |
| 72 | 1.4.2.6.1 | Bulk Material |  | 6d | 2024-01-12 | 2024-01-17 | 69, 29 |  |  | 2024-01-12 | 2024-01-17 | 6d | 29d | 0d | Furnace Lower Burden Feeder | 1402/10/22 | 1402/10/27 |  |
| 73 | 1.4.2.6.2 | Other (Nut & Bolt - Paint) |  | 6d | 2024-01-18 | 2024-01-23 | 72 |  |  | 2024-01-18 | 2024-01-23 | 6d | 116d |  | Furnace Lower Burden Feeder | 1402/10/28 | 1402/11/3 |  |
| 74 | 1.4.2.7 | **Cooler middle Burden Feeder** |  | 134d | 2023-09-12 A | 2024-01-23 |  | 50% | 67d | 2023-09-12 | 2024-01-23 | 134d | 29d |  | Cooler middle Burden Feeder | 1402/6/21 | 1402/11/3 | -25 |
| 75 | 1.4.2.7.1 | Bulk Material |  | 6d | 2024-01-18 | 2024-01-23 | 33, 72 |  |  | 2024-01-18 | 2024-01-23 | 6d | 29d | 0d | Cooler middle Burden Feeder | 1402/10/28 | 1402/11/3 |  |
| 76 | 1.4.2.7.2 | Other (Nut & Bolt - Paint) |  | 6d | 2023-09-12 A | 2023-09-17 A |  | 100% |  | 2023-09-12 | 2023-09-17 | 6d |  |  | Cooler middle Burden Feeder | 1402/6/21 | 1402/6/26 | -100 |

| ID | WBS | Task | Duration | Start | Finish | Predecessors | Complete | Remaining | Baseline start | Baseline finish | Baseline duration | Total slack | Free slack | Text2 | Start. | Finish. | Variance |
| --- | --- | --- | --- | --- | --- | --- | --- | --- | --- | --- | --- | --- | --- | --- | --- | --- | --- |
| 77 | 1.4.2.8 | **Cooler Lower Burden Feeder** | 12d | 2024-01-24 | 2024-02-04 |  |  |  | 2024-01-24 | 2024-02-04 | 12d | 29d |  | Cooler Lower Burden Feeder | 1402/11/4 | 1402/11/15 |  |
| 78 | 1.4.2.8.1 | Bulk Material | 6d | 2024-01-24 | 2024-01-29 | 75 |  |  | 2024-01-24 | 2024-01-29 | 6d | 29d | 0d | Cooler Lower Burden Feeder | 1402/11/4 | 1402/11/9 |  |
| 79 | 1.4.2.8.2 | Other (Nut & Bolt - Paint) | 6d | 2024-01-30 | 2024-02-04 | 37, 78 |  |  | 2024-01-30 | 2024-02-04 | 6d | 104d |  | Cooler Lower Burden Feeder | 1402/11/10 | 1402/11/15 |  |
| 80 | 1.4.2.9 | **FPD** | 171d | 2023-09-22 A | 2024-03-10 |  | 56% | 76d | 2023-09-22 | 2024-03-10 | 171d | 69d |  | FPD | 1402/6/31 | 1402/12/20 | -43.5 |
| 81 | 1.4.2.9.1 | Bulk Material | 165d | 2023-09-22 A | 2024-03-04 | 41 | 58% | 70d | 2023-09-22 | 2024-03-04 | 165d | 0d |  | FPD | 1402/6/31 | 1402/12/14 | -58 |
| 82 | 1.4.2.9.2 | Other (Nut & Bolt - Paint) | 6d | 2024-03-05 | 2024-03-10 | 81 |  |  | 2024-03-05 | 2024-03-10 | 6d | 69d |  | FPD | 1402/12/15 | 1402/12/20 |  |
| 83 | 1.4.2.10 | **Lower & Upper Slide Gate** | 26d | 2023-09-25 A | 2023-10-20 A |  | 100% |  | 2023-09-25 | 2023-10-20 | 26d |  |  | Lower & Upper Slide Gate | 1402/7/3 | 1402/7/28 | -100 |
| 84 | 1.4.2.10.1 | Bulk Material | 20d | 2023-09-25 A | 2023-10-14 A | 45 | 100% |  | 2023-09-25 | 2023-10-14 | 20d |  |  | Lower & Upper Slide Gate | 1402/7/3 | 1402/7/22 | -100 |
| 85 | 1.4.2.10.2 | Other (Nut & Bolt - Paint) | 6d | 2023-10-15 A | 2023-10-20 A | 84 | 100% |  | 2023-10-15 | 2023-10-20 | 6d |  |  | Lower & Upper Slide Gate | 1402/7/23 | 1402/7/28 | -100 |
| 86 | 1.4.2.11 | **Furnace Thermowell** | 191d | 2023-09-14 A | 2024-03-22 |  | 54% | 88d | 2023-09-14 | 2024-03-22 | 191d | 57d |  | Furnace Thermowell | 1402/6/23 | 1403/1/3 | -42 |
| 87 | 1.4.2.11.1 | Bulk Material | 185d | 2023-09-14 A | 2024-03-16 | 49 | 56% | 82d | 2023-09-14 | 2024-03-16 | 185d | 29d | 0d | Furnace Thermowell | 1402/6/23 | 1402/12/26 | -56 |
| 88 | 1.4.2.11.2 | Other (Nut & Bolt - Paint) | 6d | 2024-03-17 | 2024-03-22 | 87 |  |  | 2024-03-17 | 2024-03-22 | 6d | 57d |  | Furnace Thermowell | 1402/12/27 | 1403/1/3 |  |
| 89 | 1.4.2.12 | **Cooler Thermowell** | 192d | 2023-09-12 A | 2024-03-21 |  | 54% | 87.46d | 2023-09-12 | 2024-03-21 | 192d | 33d |  | Cooler Thermowell | 1402/6/21 | 1403/1/2 | -64.75 |
| 90 | 1.4.2.12.1 | Bulk Material | 185d | 2023-09-19 A | 2024-03-21 | 53, 87SS+5d | 53% | 87d | 2023-09-19 | 2024-03-21 | 185d | 33d | 3d | Cooler Thermowell | 1402/6/28 | 1403/1/2 | -53 |
| 91 | 1.4.2.12.2 | Other (Nut & Bolt - Paint) | 6d | 2023-09-12 A | 2023-09-17 A |  | 100% |  | 2023-09-12 | 2023-09-17 | 6d |  |  | Cooler Thermowell | 1402/6/21 | 1402/6/26 | -100 |
| 92 | 1.4.3 | **Fabrication** | 217d | 2023-10-15 A | 2024-05-18 |  | 34% | 143.73d | 2023-10-15 | 2024-05-18 | 217d | 0d |  |  | 1402/7/23 | 1403/2/29 | -41.59 |
| 93 | 1.4.3.1 | **Main Burner A** | 62d | 2023-10-18 A | 2023-12-18 A |  | 100% |  | 2023-10-18 | 2023-12-18 | 62d |  |  | Main Burner A | 1402/7/26 | 1402/9/27 | -100 |
| 94 | 1.4.3.1.1 | Preparation (Cutting - Machining) | 28d | 2023-10-18 A | 2023-11-14 A | 57 | 100% |  | 2023-10-18 | 2023-11-14 | 28d |  |  | Main Burner A | 1402/7/26 | 1402/8/23 | -100 |
| 95 | 1.4.3.1.2 | Assembly | 37d | 2023-10-26 A | 2023-12-01 A | 94SS+8d | 100% |  | 2023-10-26 | 2023-12-01 | 37d |  |  | Main Burner A | 1402/8/4 | 1402/9/10 | -100 |
| 96 | 1.4.3.1.3 | Welding | 32d | 2023-10-30 A | 2023-11-30 A | 95SS+4d | 100% |  | 2023-10-30 | 2023-11-30 | 32d |  |  | Main Burner A | 1402/8/8 | 1402/9/9 | -100 |
| 97 | 1.4.3.1.4 | NDT & Inspection | 8d | 2023-11-27 A | 2023-12-04 A | 96FS-4d | 100% |  | 2023-11-27 | 2023-12-04 | 8d |  |  | Main Burner A | 1402/9/6 | 1402/9/13 | -100 |
| 98 | 1.4.3.1.5 | Sandblast & Painting | 7d | 2023-12-05 A | 2023-12-11 A | 97 | 100% |  | 2023-12-05 | 2023-12-11 | 7d |  |  | Main Burner A | 1402/9/14 | 1402/9/20 | -100 |
| 99 | 1.4.3.1.6 | Packing & Delivery | 7d | 2023-12-12 A | 2023-12-18 A | 98 | 100% |  | 2023-12-12 | 2023-12-18 | 7d |  |  | Main Burner A | 1402/9/21 | 1402/9/27 | -100 |
| 100 | 1.4.3.2 | **Main Burner B** | 43d | 2023-11-15 A | 2023-12-27 |  | 96% | 1.83d | 2023-11-15 | 2023-12-27 | 43d | 143d |  | Main Burner B | 1402/8/24 | 1402/10/6 | -93.44 |
| 101 | 1.4.3.2.1 | Preparation (Cutting - Machining) | 10d | 2023-11-15 A | 2023-11-24 A | 94, 60 | 100% |  | 2023-11-15 | 2023-11-24 | 10d |  |  | Main Burner B | 1402/8/24 | 1402/9/3 | -100 |
| 102 | 1.4.3.2.2 | Assembly | 14d | 2023-12-02 A | 2023-12-15 A | 101, 95 | 100% |  | 2023-12-02 | 2023-12-15 | 14d |  |  | Main Burner B | 1402/9/11 | 1402/9/24 | -100 |
| 103 | 1.4.3.2.3 | Welding | 12d | 2023-12-05 A | 2023-12-16 A | 102SS+3d, 96 | 100% |  | 2023-12-05 | 2023-12-16 | 12d |  |  | Main Burner B | 1402/9/14 | 1402/9/25 | -100 |
| 104 | 1.4.3.2.4 | NDT & Inspection | 5d | 2023-12-17 A | 2023-12-21 A | 103 | 100% |  | 2023-12-17 | 2023-12-21 | 5d |  |  | Main Burner B | 1402/9/26 | 1402/9/30 | -100 |
| 105 | 1.4.3.2.5 | Sandblast & Painting | 4d | 2023-12-22 A | 2023-12-25 A | 104 | 100% |  | 2023-12-22 | 2023-12-25 | 4d |  |  | Main Burner B | 1402/10/1 | 1402/10/4 | -100 |
| 106 | 1.4.3.2.6 | Packing & Delivery | 2d | 2023-12-26 | 2023-12-27 | 105 |  |  | 2023-12-26 | 2023-12-27 | 2d | 143d |  | Main Burner B | 1402/10/5 | 1402/10/6 |  |

| ID | WBS | Task | Duration | Start | Finish | Predecessors | Complete | Remaining | Baseline start | Baseline finish | Baseline duration | Total slack | Free slack | Variance | Text2 | Start. | Finish. |
| --- | --- | --- | --- | --- | --- | --- | --- | --- | --- | --- | --- | --- | --- | --- | --- | --- | --- |
| 107 | 1.4.3.3 | **Auxiliary Burner** | 40d | 2023-11-25 A | 2024-01-03 |  | 75% | 10d | 2023-11-25 | 2024-01-03 | 40d | 136d |  | -72.29 | Auxiliary Burner | 1402/9/4 | 1402/10/13 |
| 108 | 1.4.3.3.1 | Preparation (Cutting - Machining) | 10d | 2023-11-25 A | 2023-12-04 A | 101, 63 | 100% |  | 2023-11-25 | 2023-12-04 | 10d |  |  | -100 | Auxiliary Burner | 1402/9/4 | 1402/9/13 |
| 109 | 1.4.3.3.2 | Assembly | 10d | 2023-12-16 A | 2023-12-25 A | 108, 102 | 100% |  | 2023-12-16 | 2023-12-25 | 10d |  |  | -100 | Auxiliary Burner | 1402/9/25 | 1402/10/4 |
| 110 | 1.4.3.3.3 | Welding | 9d | 2023-12-19 A | 2023-12-27 | 109SS+3d, 103 | 78% | 2d | 2023-12-19 | 2023-12-27 | 9d | 136d | 0d | -78 | Auxiliary Burner | 1402/9/28 | 1402/10/6 |
| 111 | 1.4.3.3.4 | NDT & Inspection | 3d | 2023-12-28 | 2023-12-30 | 110 |  |  | 2023-12-28 | 2023-12-30 | 3d | 136d | 0d |  | Auxiliary Burner | 1402/10/7 | 1402/10/9 |
| 112 | 1.4.3.3.5 | Sandblast & Painting & Pickling | 3d | 2023-12-31 | 2024-01-02 | 111 |  |  | 2023-12-31 | 2024-01-02 | 3d | 136d | 0d |  | Auxiliary Burner | 1402/10/10 | 1402/10/12 |
| 113 | 1.4.3.3.6 | Packing & Delivery | 1d | 2024-01-03 | 2024-01-03 | 112 |  |  | 2024-01-03 | 2024-01-03 | 1d | 136d |  |  | Auxiliary Burner | 1402/10/13 | 1402/10/13 |
| 114 | 1.4.3.4 | **Furnace Upper Burden Feeder** | 95d | 2024-02-10 | 2024-05-14 |  |  |  | 2024-02-10 | 2024-05-14 | 95d | 4d |  |  | Furnace Upper Burden Feeder | 1402/11/21 | 1403/2/25 |
| 115 | 1.4.3.4.1 | Preparation (Cutting - Machining) | 20d | 2024-02-10 | 2024-02-29 | 22, 66 |  |  | 2024-02-10 | 2024-02-29 | 20d | 4d | 0d |  | Furnace Upper Burden Feeder | 1402/11/21 | 1402/12/10 |
| 116 | 1.4.3.4.2 | Assembly | 50d | 2024-03-01 | 2024-04-19 | 115 |  |  | 2024-03-01 | 2024-04-19 | 50d | 4d | 0d |  | Furnace Upper Burden Feeder | 1402/12/11 | 1403/1/31 |
| 117 | 1.4.3.4.3 | Welding | 50d | 2024-03-05 | 2024-04-23 | 116SS+4d |  |  | 2024-03-05 | 2024-04-23 | 50d | 4d | 0d |  | Furnace Upper Burden Feeder | 1402/12/15 | 1403/2/4 |
| 118 | 1.4.3.4.4 | NDT & Inspection | 6d | 2024-04-24 | 2024-04-29 | 117 |  |  | 2024-04-24 | 2024-04-29 | 6d | 4d | 0d |  | Furnace Upper Burden Feeder | 1403/2/5 | 1403/2/10 |
| 119 | 1.4.3.4.5 | LEAK TEST | 6d | 2024-04-30 | 2024-05-05 | 118 |  |  | 2024-04-30 | 2024-05-05 | 6d | 4d | 0d |  | Furnace Upper Burden Feeder | 1403/2/11 | 1403/2/16 |
| 120 | 1.4.3.4.6 | Sandblast & Painting & Pickling | 6d | 2024-05-06 | 2024-05-11 | 119 |  |  | 2024-05-06 | 2024-05-11 | 6d | 4d | 0d |  | Furnace Upper Burden Feeder | 1403/2/17 | 1403/2/22 |
| 121 | 1.4.3.4.7 | Packing & Delivery | 3d | 2024-05-12 | 2024-05-14 | 120 |  |  | 2024-05-12 | 2024-05-14 | 3d | 4d |  |  | Furnace Upper Burden Feeder | 1403/2/23 | 1403/2/25 |
| 122 | 1.4.3.5 | **Furnace Middle Burden Feeder** | 44d | 2024-01-12 | 2024-02-24 |  |  |  | 2024-01-12 | 2024-02-24 | 44d | 29d |  |  | Furnace Middle Burden Feeder | 1402/10/22 | 1402/12/5 |
| 123 | 1.4.3.5.1 | Preparation (Cutting - Machining) | 12d | 2024-01-12 | 2024-01-23 | 69 |  |  | 2024-01-12 | 2024-01-23 | 12d | 29d | 0d |  | Furnace Middle Burden Feeder | 1402/10/22 | 1402/11/3 |
| 124 | 1.4.3.5.2 | Assembly | 14d | 2024-01-24 | 2024-02-06 | 123 |  |  | 2024-01-24 | 2024-02-06 | 14d | 84d | 0d |  | Furnace Middle Burden Feeder | 1402/11/4 | 1402/11/17 |
| 125 | 1.4.3.5.3 | Welding | 12d | 2024-01-28 | 2024-02-08 | 124SS+4d |  |  | 2024-01-28 | 2024-02-08 | 12d | 84d | 0d |  | Furnace Middle Burden Feeder | 1402/11/8 | 1402/11/19 |
| 126 | 1.4.3.5.4 | NDT & Inspection | 5d | 2024-02-09 | 2024-02-13 | 125 |  |  | 2024-02-09 | 2024-02-13 | 5d | 84d | 0d |  | Furnace Middle Burden Feeder | 1402/11/20 | 1402/11/24 |
| 127 | 1.4.3.5.5 | Sandblast & Painting & Pickling | 3d | 2024-02-14 | 2024-02-16 | 126, 70 |  |  | 2024-02-14 | 2024-02-16 | 3d | 84d | 0d |  | Furnace Middle Burden Feeder | 1402/11/25 | 1402/11/27 |
| 128 | 1.4.3.5.6 | LEAK TEST | 6d | 2024-02-17 | 2024-02-22 | 127 |  |  | 2024-02-17 | 2024-02-22 | 6d | 84d | 0d |  | Furnace Middle Burden Feeder | 1402/11/28 | 1402/12/3 |
| 129 | 1.4.3.5.7 | Packing & Delivery | 2d | 2024-02-23 | 2024-02-24 | 128 |  |  | 2024-02-23 | 2024-02-24 | 2d | 84d |  |  | Furnace Middle Burden Feeder | 1402/12/4 | 1402/12/5 |
| 130 | 1.4.3.6 | **Furnace Lower Burden Feeder** | 39d | 2024-01-24 | 2024-03-02 |  |  |  | 2024-01-24 | 2024-03-02 | 39d | 29d |  |  | Furnace Lower Burden Feeder | 1402/11/4 | 1402/12/12 |
| 131 | 1.4.3.6.1 | Preparation (Cutting - Machining) | 6d | 2024-01-24 | 2024-01-29 | 30, 72, 123 |  |  | 2024-01-24 | 2024-01-29 | 6d | 29d | 0d |  | Furnace Lower Burden Feeder | 1402/11/4 | 1402/11/9 |
| 132 | 1.4.3.6.2 | Assembly | 10d | 2024-01-30 | 2024-02-08 | 131 |  |  | 2024-01-30 | 2024-02-08 | 10d | 72d | 0d |  | Furnace Lower Burden Feeder | 1402/11/10 | 1402/11/19 |
| 133 | 1.4.3.6.3 | Welding | 10d | 2024-02-09 | 2024-02-18 | 132 |  |  | 2024-02-09 | 2024-02-18 | 10d | 77d | 0d |  | Furnace Lower Burden Feeder | 1402/11/20 | 1402/11/29 |
| 134 | 1.4.3.6.4 | NDT & Inspection | 6d | 2024-02-19 | 2024-02-24 | 133 |  |  | 2024-02-19 | 2024-02-24 | 6d | 77d | 0d |  | Furnace Lower Burden Feeder | 1402/11/30 | 1402/12/5 |
| 135 | 1.4.3.6.5 | LEAK TEST | 1d | 2024-02-25 | 2024-02-25 | 134 |  |  | 2024-02-25 | 2024-02-25 | 1d | 77d | 0d |  | Furnace Lower Burden Feeder | 1402/12/6 | 1402/12/6 |
| 136 | 1.4.3.6.6 | Sandblast & Painting | 4d | 2024-02-26 | 2024-02-29 | 135 |  |  | 2024-02-26 | 2024-02-29 | 4d | 77d | 0d |  | Furnace Lower Burden Feeder | 1402/12/7 | 1402/12/10 |
| 137 | 1.4.3.6.7 | Packing & Delivery | 2d | 2024-03-01 | 2024-03-02 | 136, 135 |  |  | 2024-03-01 | 2024-03-02 | 2d | 77d |  |  | Furnace Lower Burden Feeder | 1402/12/11 | 1402/12/12 |

| ID | WBS | Task | Duration | Start | Finish | Predecessors | Complete | Baseline start | Baseline finish | Baseline duration | Total slack | Free slack | Text2 | Start. | Finish. | Variance |
| --- | --- | --- | --- | --- | --- | --- | --- | --- | --- | --- | --- | --- | --- | --- | --- | --- |
| 138 | 1.4.3.7 | **Cooler middle Burden Feeder** | 36d | 2024-01-24 | 2024-02-28 |  |  | 2024-01-24 | 2024-02-28 | 36d | 29d |  | Cooler middle Burden Feeder | 1402/11/4 | 1402/12/9 |  |
| 139 | 1.4.3.7.1 | Preparation (Cutting - Machining) | 6d | 2024-01-24 | 2024-01-29 | 75, 131SS |  | 2024-01-24 | 2024-01-29 | 6d | 29d | 0d | Cooler middle Burden Feeder | 1402/11/4 | 1402/11/9 |  |
| 140 | 1.4.3.7.2 | Assembly | 12d | 2024-01-30 | 2024-02-10 | 139, 132SS |  | 2024-01-30 | 2024-02-10 | 12d | 72d | 0d | Cooler middle Burden Feeder | 1402/11/10 | 1402/11/21 |  |
| 141 | 1.4.3.7.3 | Welding | 12d | 2024-02-02 | 2024-02-13 | 140SS+3d |  | 2024-02-02 | 2024-02-13 | 12d | 80d | 0d | Cooler middle Burden Feeder | 1402/11/13 | 1402/11/24 |  |
| 142 | 1.4.3.7.4 | NDT & Inspection | 6d | 2024-02-14 | 2024-02-19 | 141 |  | 2024-02-14 | 2024-02-19 | 6d | 80d | 0d | Cooler middle Burden Feeder | 1402/11/25 | 1402/11/30 |  |
| 143 | 1.4.3.7.5 | LEAK TEST | 1d | 2024-02-20 | 2024-02-20 | 142 |  | 2024-02-20 | 2024-02-20 | 1d | 80d | 0d | Cooler middle Burden Feeder | 1402/12/1 | 1402/12/1 |  |
| 144 | 1.4.3.7.6 | Sandblast & Painting & Pickling | 6d | 2024-02-21 | 2024-02-26 | 143 |  | 2024-02-21 | 2024-02-26 | 6d | 80d | 0d | Cooler middle Burden Feeder | 1402/12/2 | 1402/12/7 |  |
| 145 | 1.4.3.7.7 | Packing & Delivery | 2d | 2024-02-27 | 2024-02-28 | 144, 143 |  | 2024-02-27 | 2024-02-28 | 2d | 80d |  | Cooler middle Burden Feeder | 1402/12/8 | 1402/12/9 |  |
| 146 | 1.4.3.8 | **Cooler Lower Burden Feeder** | 38d | 2024-01-30 | 2024-03-07 |  |  | 2024-01-30 | 2024-03-07 | 38d | 29d |  | Cooler Lower Burden Feeder | 1402/11/10 | 1402/12/17 |  |
| 147 | 1.4.3.8.1 | Preparation (Cutting - Machining) | 6d | 2024-01-30 | 2024-02-04 | 38, 78, 139 |  | 2024-01-30 | 2024-02-04 | 6d | 29d | 6d | Cooler Lower Burden Feeder | 1402/11/10 | 1402/11/15 |  |
| 148 | 1.4.3.8.2 | Assembly | 10d | 2024-02-11 | 2024-02-20 | 140, 147 |  | 2024-02-11 | 2024-02-20 | 10d | 72d | 0d | Cooler Lower Burden Feeder | 1402/11/22 | 1402/12/1 |  |
| 149 | 1.4.3.8.3 | Welding | 10d | 2024-02-14 | 2024-02-23 | 148SS+3d |  | 2024-02-14 | 2024-02-23 | 10d | 72d | 0d | Cooler Lower Burden Feeder | 1402/11/25 | 1402/12/4 |  |
| 150 | 1.4.3.8.4 | NDT & Inspection | 6d | 2024-02-24 | 2024-02-29 | 149 |  | 2024-02-24 | 2024-02-29 | 6d | 72d | 0d | Cooler Lower Burden Feeder | 1402/12/5 | 1402/12/10 |  |
| 151 | 1.4.3.8.5 | LEAK TEST | 1d | 2024-03-01 | 2024-03-01 | 150 |  | 2024-03-01 | 2024-03-01 | 1d | 72d | 0d | Cooler Lower Burden Feeder | 1402/12/11 | 1402/12/11 |  |
| 152 | 1.4.3.8.6 | Sandblast & Painting & Pickling | 4d | 2024-03-02 | 2024-03-05 | 151 |  | 2024-03-02 | 2024-03-05 | 4d | 72d | 0d | Cooler Lower Burden Feeder | 1402/12/12 | 1402/12/15 |  |
| 153 | 1.4.3.8.7 | Packing & Delivery | 2d | 2024-03-06 | 2024-03-07 | 152, 151 |  | 2024-03-06 | 2024-03-07 | 2d | 72d |  | Cooler Lower Burden Feeder | 1402/12/16 | 1402/12/17 |  |
| 154 | 1.4.3.9 | **FPD** | 75d | 2024-03-05 | 2024-05-18 |  |  | 2024-03-05 | 2024-05-18 | 75d | 0d |  | FPD | 1402/12/15 | 1403/2/29 |  |
| 155 | 1.4.3.9.1 | Preparation (Cutting - Machining) | 30d | 2024-03-05 | 2024-04-03 | 42, 81, 147 |  | 2024-03-05 | 2024-04-03 | 30d | 0d |  | FPD | 1402/12/15 | 1403/1/15 |  |
| 156 | 1.4.3.9.2 | Assembly | 24d | 2024-04-04 | 2024-04-27 | 155 |  | 2024-04-04 | 2024-04-27 | 24d | 0d |  | FPD | 1403/1/16 | 1403/2/8 |  |
| 157 | 1.4.3.9.3 | Welding | 20d | 2024-04-20 | 2024-05-09 | 156FS-8d |  | 2024-04-20 | 2024-05-09 | 20d | 0d |  | FPD | 1403/2/1 | 1403/2/20 |  |
| 158 | 1.4.3.9.4 | NDT & Inspection | 3d | 2024-05-10 | 2024-05-12 | 157 |  | 2024-05-10 | 2024-05-12 | 3d | 0d |  | FPD | 1403/2/21 | 1403/2/23 |  |
| 159 | 1.4.3.9.5 | Sandblast & Painting & Pickling | 4d | 2024-05-13 | 2024-05-16 | 158 |  | 2024-05-13 | 2024-05-16 | 4d | 0d |  | FPD | 1403/2/24 | 1403/2/27 |  |
| 160 | 1.4.3.9.6 | Packing & Delivery | 2d | 2024-05-17 | 2024-05-18 | 159 |  | 2024-05-17 | 2024-05-18 | 2d | 0d |  | FPD | 1403/2/28 | 1403/2/29 |  |
| 161 | 1.4.3.10 | **Lower & Upper Slide Gate** | 37d | 2023-10-15 A | 2023-11-20 A |  | 100% | 2023-10-15 | 2023-11-20 | 37d |  |  | Lower & Upper Slide Gate | 1402/7/23 | 1402/8/29 | -100 |
| 162 | 1.4.3.10.1 | Preparation (Cutting - Machining) | 10d | 2023-10-15 A | 2023-10-24 A | 84 | 100% | 2023-10-15 | 2023-10-24 | 10d |  |  | Lower & Upper Slide Gate | 1402/7/23 | 1402/8/2 | -100 |
| 163 | 1.4.3.10.2 | Assembly | 10d | 2023-10-25 A | 2023-11-03 A | 162 | 100% | 2023-10-25 | 2023-11-03 | 10d |  |  | Lower & Upper Slide Gate | 1402/8/3 | 1402/8/12 | -100 |
| 164 | 1.4.3.10.3 | Welding | 10d | 2023-10-29 A | 2023-11-07 A | 163SS+4d | 100% | 2023-10-29 | 2023-11-07 | 10d |  |  | Lower & Upper Slide Gate | 1402/8/7 | 1402/8/16 | -100 |
| 165 | 1.4.3.10.4 | NDT & Inspection | 3d | 2023-11-08 A | 2023-11-10 A | 164 | 100% | 2023-11-08 | 2023-11-10 | 3d |  |  | Lower & Upper Slide Gate | 1402/8/17 | 1402/8/19 | -100 |
| 166 | 1.4.3.10.5 | PERFORMANCE TEST | 1d | 2023-11-11 A | 2023-11-11 A | 165 | 100% | 2023-11-11 | 2023-11-11 | 1d |  |  | Lower & Upper Slide Gate | 1402/8/20 | 1402/8/20 | -100 |
| 167 | 1.4.3.10.6 | Sandblast & Painting & Pickling | 6d | 2023-11-12 A | 2023-11-17 A | 166 | 100% | 2023-11-12 | 2023-11-17 | 6d |  |  | Lower & Upper Slide Gate | 1402/8/21 | 1402/8/26 | -100 |
| 168 | 1.4.3.10.7 | Packing & Delivery | 3d | 2023-11-18 A | 2023-11-20 A | 167, 166 | 100% | 2023-11-18 | 2023-11-20 | 3d |  |  | Lower & Upper Slide Gate | 1402/8/27 | 1402/8/29 | -100 |

| ID | WBS | Task | Type | Duration | Start | Finish | Predecessors | Baseline start | Baseline finish | Baseline duration | Total slack | Free slack | Text2 | Start. | Finish. |
| --- | --- | --- | --- | --- | --- | --- | --- | --- | --- | --- | --- | --- | --- | --- | --- |
| 169 | 1.4.3.11 | **Furnace Thermowell** |  | 22d | 2024-03-17 | 2024-04-07 |  | 2024-03-17 | 2024-04-07 | 22d | 29d |  | Furnace Thermowell | 1402/12/27 | 1403/1/19 |
| 170 | 1.4.3.11.1 | Preparation (Cutting - Machining) |  | 8d | 2024-03-17 | 2024-03-24 | 87 | 2024-03-17 | 2024-03-24 | 8d | 29d | 0d | Furnace Thermowell | 1402/12/27 | 1403/1/5 |
| 171 | 1.4.3.11.2 | Assembly |  | 6d | 2024-03-25 | 2024-03-30 | 170 | 2024-03-25 | 2024-03-30 | 6d | 29d | 0d | Furnace Thermowell | 1403/1/6 | 1403/1/11 |
| 172 | 1.4.3.11.3 | Welding |  | 5d | 2024-03-31 | 2024-04-04 | 171 | 2024-03-31 | 2024-04-04 | 5d | 32d | 0d | Furnace Thermowell | 1403/1/12 | 1403/1/16 |
| 173 | 1.4.3.11.4 | NDT & Inspection |  | 2d | 2024-04-05 | 2024-04-06 | 172 | 2024-04-05 | 2024-04-06 | 2d | 41d | 0d | Furnace Thermowell | 1403/1/17 | 1403/1/18 |
| 174 | 1.4.3.11.5 | Packing & Delivery |  | 1d | 2024-04-07 | 2024-04-07 | 173 | 2024-04-07 | 2024-04-07 | 1d | 41d |  | Furnace Thermowell | 1403/1/19 | 1403/1/19 |
| 175 | 1.4.3.12 | **Cooler Thermowell** |  | 26d | 2024-03-25 | 2024-04-19 |  | 2024-03-25 | 2024-04-19 | 26d | 29d |  | Cooler Thermowell | 1403/1/6 | 1403/1/31 |
| 176 | 1.4.3.12.1 | Preparation (Cutting - Machining) |  | 5d | 2024-03-25 | 2024-03-29 | 170, 90 | 2024-03-25 | 2024-03-29 | 5d | 30d | 1d | Cooler Thermowell | 1403/1/6 | 1403/1/10 |
| 177 | 1.4.3.12.2 | Assembly |  | 8d | 2024-03-31 | 2024-04-07 | 171, 176 | 2024-03-31 | 2024-04-07 | 8d | 29d | 0d | Cooler Thermowell | 1403/1/12 | 1403/1/19 |
| 178 | 1.4.3.12.3 | Welding |  | 8d | 2024-04-08 | 2024-04-15 | 177, 172 | 2024-04-08 | 2024-04-15 | 8d | 29d | 0d | Cooler Thermowell | 1403/1/20 | 1403/1/27 |
| 179 | 1.4.3.12.4 | NDT & Inspection |  | 2d | 2024-04-16 | 2024-04-17 | 178 | 2024-04-16 | 2024-04-17 | 2d | 29d | 0d | Cooler Thermowell | 1403/1/28 | 1403/1/29 |
| 180 | 1.4.3.12.5 | Packing & Delivery |  | 2d | 2024-04-18 | 2024-04-19 | 179 | 2024-04-18 | 2024-04-19 | 2d | 29d |  | Cooler Thermowell | 1403/1/30 | 1403/1/31 |
| 181 | 1.5 | Finish Project | milestone | 0d | 2024-05-18 | 2024-05-18 | 99, 106, 113, 121, 129, 137, 145, 153, 160, 168, 174, 180 | 2024-05-18 | 2024-05-18 | 0d | 0d |  |  | 1403/2/29 | 1403/2/29 |
